# Replanificacion

How a schedule from MS Project changed from version to version. A marks actual dates.

## Version 1 (saved 2013-10-17, file CronogramaR_V1.1.0.mpp)

Note of the change: [JCG] Actualziación de Documentos Semana 8

| ID | WBS | Task | Duration | Start | Finish | Complete |
| --- | --- | --- | --- | --- | --- | --- |
| 1 | 1 | **Iniciación** | 25d | 2013-04-29 A | 2013-05-31 A | 100% |
| 2 | 1.1 | **Acta de Constitución** | 5d | 2013-04-29 A | 2013-05-03 A | 100% |
| 3 |  | Sumario Ejecutivo del Proyecto | 1d | 2013-04-30 A | 2013-04-30 A | 100% |
| 4 |  | Objetivos del Proyecto | 1d | 2013-04-30 A | 2013-04-30 A | 100% |
| 5 |  | Entregables del Proyecto | 1d | 2013-05-01 A | 2013-05-01 A | 100% |
| 6 |  | Organización del Proyecto | 1d | 2013-04-29 A | 2013-04-29 A | 100% |
| 7 |  | Autoridad y Responsabilidad del J.P | 1d | 2013-04-29 A | 2013-04-29 A | 100% |
| 8 |  | Enfoque de Implementación | 1d | 2013-05-01 A | 2013-05-01 A | 100% |
| 9 |  | Plan de Alto Nivel | 1d | 2013-05-02 A | 2013-05-02 A | 100% |
| 10 |  | Riesgos Identificados | 1d | 2013-05-02 A | 2013-05-02 A | 100% |
| 11 |  | Supuestos | 1d | 2013-05-03 A | 2013-05-03 A | 100% |
| 12 |  | Restricciones | 1d | 2013-05-03 A | 2013-05-03 A | 100% |
| 13 |  | Identificación de los Interesados | 1d | 2013-04-29 A | 2013-04-29 A | 100% |
| 14 | 1.2 | **Alcance preliminar** | 20d | 2013-05-06 A | 2013-05-31 A | 100% |
| 15 |  | Fundamentación del Proyecto | 1d | 2013-05-06 A | 2013-05-06 A | 100% |
| 16 | 1.2.2 | **Organización** | 2d | 2013-05-06 A | 2013-05-07 A | 100% |
| 17 |  | Organigrama OPServices | 1d | 2013-05-06 A | 2013-05-06 A | 100% |
| 18 |  | Organigrama Equipo | 1d | 2013-05-07 A | 2013-05-07 A | 100% |
| 19 | 1.2.3 | **Proceso de Negocio** | 4d | 2013-05-06 A | 2013-05-09 A | 100% |
| 20 |  | Situación Actual | 2d | 2013-05-08 A | 2013-05-09 A | 100% |
| 21 |  | B.P.M.N | 2d | 2013-05-06 A | 2013-05-07 A | 100% |
| 22 | 1.2.4 | **Alcances del Proyectos** | 3d | 2013-05-13 A | 2013-05-15 A | 100% |
| 23 |  | Limitaciones del Alcance | 2d | 2013-05-13 A | 2013-05-14 A | 100% |
| 24 |  | Supuestos del alcance | 1d | 2013-05-15 A | 2013-05-15 A | 100% |
| 25 | 1.2.5 | **Objetivos del Proyecto** | 5d | 2013-05-20 A | 2013-05-24 A | 100% |
| 26 |  | Objetivos Generales | 1d | 2013-05-23 A | 2013-05-23 A | 100% |
| 27 |  | Diagrama Causa Efecto | 3d | 2013-05-20 A | 2013-05-22 A | 100% |
| 28 |  | Objetivos Específicos | 1d | 2013-05-24 A | 2013-05-24 A | 100% |
| 29 |  | Solución Propuesta | 1d | 2013-05-27 A | 2013-05-27 A | 100% |
| 30 | 1.2.7 | **Enfoque de la Solución** | 4d | 2013-05-28 A | 2013-05-31 A | 100% |
| 31 |  | Enfoque Técnico | 1d | 2013-05-31 A | 2013-05-31 A | 100% |
| 32 |  | Enfoque Funcional | 1d | 2013-05-31 A | 2013-05-31 A | 100% |
| 33 |  | Enfoque metodológico | 3d | 2013-05-28 A | 2013-05-30 A | 100% |
| 34 | 2 | **Elaboración** | 41d | 2013-06-03 A | 2013-07-29 A | 100% |
| 35 | 2.1 | **Planificación** | 15d | 2013-06-03 A | 2013-06-21 A | 100% |
| 36 | 2.1.1 | **Planes Subsidiarios** | 5d | 2013-06-03 A | 2013-06-07 A | 100% |
| 37 | 2.1.1.1 | **Plan de gestión del alcance del proyecto** | 1d | 2013-06-03 A | 2013-06-03 A | 100% |
| 38 | 2.1.1.1.1 | **Definir Alcances** | 1d | 2013-06-03 A | 2013-06-03 A | 100% |
| 39 |  | Analisis de Producto | 1d | 2013-06-03 A | 2013-06-03 A | 100% |
| 40 | 2.1.1.1.2 | **Deglosar Actividades** | 1d | 2013-06-03 A | 2013-06-03 A | 100% |
| 41 |  | E.D.T | 1d | 2013-06-03 A | 2013-06-03 A | 100% |
| 42 |  | Controlar el Alcance | 1d | 2013-06-03 A | 2013-06-03 A | 100% |
| 43 | 2.1.1.2 | **Plan de gestión de requisitos** | 1d | 2013-06-03 A | 2013-06-03 A | 100% |
| 44 | 2.1.1.2.1 | **Recopilar Requisitos** | 1d | 2013-06-03 A | 2013-06-03 A | 100% |
| 45 |  | Entrevistas | 1d | 2013-06-03 A | 2013-06-03 A | 100% |
| 46 | 2.1.1.2.2 | **Formalización de Requerimientos** | 1d | 2013-06-03 A | 2013-06-03 A | 100% |
| 47 |  | Documento SRS | 1d | 2013-06-03 A | 2013-06-03 A | 100% |
| 48 | 2.1.1.3 | **Plan de gestión del cronograma** | 1d | 2013-06-04 A | 2013-06-04 A | 100% |
| 49 | 2.1.1.3.1 | **Estimar la Duración de las Actividades** | 1d | 2013-06-04 A | 2013-06-04 A | 100% |
| 50 |  | Proxy ( PERT) | 1d | 2013-06-04 A | 2013-06-04 A | 100% |
| 51 | 2.1.1.3.2 | **Desarrollar el Cronograma** | 1d | 2013-06-04 A | 2013-06-04 A | 100% |
| 52 |  | ¿Qué pasa si? | 1d | 2013-06-04 A | 2013-06-04 A | 100% |
| 53 | 2.1.1.3.3 | **Controlar el Cronograma** | 1d | 2013-06-04 A | 2013-06-04 A | 100% |
| 54 |  | Revisiones | 1d | 2013-06-04 A | 2013-06-04 A | 100% |
| 55 | 2.1.1.4 | **Plan de gestión de costos** | 1d | 2013-06-04 A | 2013-06-04 A | 100% |
| 56 | 2.1.1.4.1 | **Estimar Costos** | 1d | 2013-06-04 A | 2013-06-04 A | 100% |
| 57 |  | Estimación de Esfuerzo | 1d | 2013-06-04 A | 2013-06-04 A | 100% |
| 58 |  | Punto Casos de Uso | 1d | 2013-06-04 A | 2013-06-04 A | 100% |
| 59 |  | Proxy ( PERT) | 1d | 2013-06-04 A | 2013-06-04 A | 100% |
| 60 |  | Determinar presupuesto | 1d | 2013-06-04 A | 2013-06-04 A | 100% |
| 61 |  | Controlar Gastos | 1d | 2013-06-04 A | 2013-06-04 A | 100% |
| 62 | 2.1.1.5 | **Plan de gestión de calidad** | 1d | 2013-06-05 A | 2013-06-05 A | 100% |
| 63 | 2.1.1.5.1 | **Planificar la Calidad** | 1d | 2013-06-05 A | 2013-06-05 A | 100% |
| 64 |  | Lluvia de Ideas | 1d | 2013-06-05 A | 2013-06-05 A | 100% |
| 65 | 2.1.1.5.2 | **Elaboración del Plan de Pruebas** | 1d | 2013-06-05 A | 2013-06-05 A | 100% |
| 66 |  | Análisis de proceso | 1d | 2013-06-05 A | 2013-06-05 A | 100% |
| 67 | 2.1.1.5.3 | **Realizar control de calidad** | 1d | 2013-06-05 A | 2013-06-05 A | 100% |
| 68 |  | Inspección | 1d | 2013-06-05 A | 2013-06-05 A | 100% |
| 69 | 2.1.1.6 | **Plan de mejoras del proceso** | 1d | 2013-06-05 A | 2013-06-05 A | 100% |
| 70 |  | Límites del proceso | 1d | 2013-06-05 A | 2013-06-05 A | 100% |

| ID | WBS | Task | Duration | Start | Finish | Complete |
| --- | --- | --- | --- | --- | --- | --- |
| 71 |  | Configuración del Proceso | 1d | 2013-06-05 A | 2013-06-05 A | 100% |
| 72 |  | Objetivos de Desempeño | 1d | 2013-06-05 A | 2013-06-05 A | 100% |
| 73 | 2.1.1.7 | **Plan de recursos humanos** | 1d | 2013-06-06 A | 2013-06-06 A | 100% |
| 74 |  | Organigramas del proyecto | 1d | 2013-06-06 A | 2013-06-06 A | 100% |
| 75 |  | Roles y Responsabilidades | 1d | 2013-06-06 A | 2013-06-06 A | 100% |
| 76 |  | Organigrama y descripción de los cargos | 1d | 2013-06-06 A | 2013-06-06 A | 100% |
| 77 | 2.1.1.8 | **Plan de gestión de las comunicaciones** | 1d | 2013-06-06 A | 2013-06-06 A | 100% |
| 78 |  | Registro de Interesados | 1d | 2013-06-06 A | 2013-06-06 A | 100% |
| 79 | 2.1.1.8.2 | **Procesos de la Organización** | 1d | 2013-06-06 A | 2013-06-06 A | 100% |
| 80 |  | Modelo de Comunicación | 1d | 2013-06-06 A | 2013-06-06 A | 100% |
| 81 | 2.1.1.9 | **Plan de gestión de riesgos** | 1d | 2013-06-07 A | 2013-06-07 A | 100% |
| 82 | 2.1.1.9.1 | **Análisis de los riesgos** | 1d | 2013-06-07 A | 2013-06-07 A | 100% |
| 83 |  | Entrevista y lluvia de ideas | 1d | 2013-06-07 A | 2013-06-07 A | 100% |
| 84 |  | Valorización de Riesgos | 1d | 2013-06-07 A | 2013-06-07 A | 100% |
| 85 |  | Mitigación y Contingencia | 1d | 2013-06-07 A | 2013-06-07 A | 100% |
| 86 | 2.1.1.10 | **Plan de gestión de las adquisiciones** | 1d | 2013-06-07 A | 2013-06-07 A | 100% |
| 87 |  | Identificación de necesidades | 1d | 2013-06-07 A | 2013-06-07 A | 100% |
| 88 | 2.1.1.10.2 | **Planificación de compra** | 1d | 2013-06-07 A | 2013-06-07 A | 100% |
| 89 |  | Analisis de Hacer o Comrar | 1d | 2013-06-07 A | 2013-06-07 A | 100% |
| 90 |  | Asignación de Recursos | 1d | 2013-06-07 A | 2013-06-07 A | 100% |
| 91 | 2.1.2 | **Elaboración de entregables al Cliente Empresarial** | 5d | 2013-06-10 A | 2013-06-14 A | 100% |
| 92 |  | Documento de planificación | 1d | 2013-06-10 A | 2013-06-10 A | 100% |
| 93 |  | Diseño de Prototipo | 1d | 2013-06-14 A | 2013-06-14 A | 100% |
| 94 |  | Analisis de los riesgos | 1d | 2013-06-11 A | 2013-06-11 A | 100% |
| 95 |  | Documento SRS | 1d | 2013-06-12 A | 2013-06-12 A | 100% |
| 96 |  | Manual de Usuario | 1d | 2013-06-14 A | 2013-06-14 A | 100% |
| 97 |  | Documentode Garantia de Calidad | 1d | 2013-06-13 A | 2013-06-13 A | 100% |
| 98 | 2.1.3 | **Elaboración de entregables al Cliente Académico** | 5d | 2013-06-17 A | 2013-06-21 A | 100% |
| 99 |  | Documento de planificación | 1d | 2013-06-18 A | 2013-06-18 A | 100% |
| 100 |  | Resultado de Iteraciones | 1d | 2013-06-19 A | 2013-06-19 A | 100% |
| 101 |  | Diseño de Prototipo | 1d | 2013-06-17 A | 2013-06-17 A | 100% |
| 102 |  | Hitos | 1d | 2013-06-20 A | 2013-06-20 A | 100% |
| 103 |  | Informe Final | 1d | 2013-06-21 A | 2013-06-21 A | 100% |
| 104 | 2.2 | **Iteracion 1 (UC03 / UC04 )** | 26d | 2013-06-24 A | 2013-07-29 A | 100% |
| 105 | 2.2.1 | **Analisis** | 8d | 2013-06-24 A | 2013-07-03 A | 100% |
| 106 | 2.2.1.1 | **Refinamiento de los requerimientos** | 8d | 2013-06-24 A | 2013-07-03 A | 100% |
| 107 |  | Requerimientos Funcionales | 8d | 2013-06-24 A | 2013-07-03 A | 100% |
| 108 |  | Requerimientos no Funcionales | 8d | 2013-06-24 A | 2013-07-03 A | 100% |
| 109 | 2.2.2 | **Diseño** | 9d | 2013-07-04 A | 2013-07-16 A | 100% |
| 110 |  | Definición de Arquitectura | 2d | 2013-07-04 A | 2013-07-05 A | 100% |
| 111 | 2.2.2.2 | **Diagramas UML** | 6d | 2013-07-09 A | 2013-07-16 A | 100% |
| 112 |  | Diagrama de Casos de Uso | 2d | 2013-07-09 A | 2013-07-10 A | 100% |
| 113 |  | Diagrama de Clases | 2.5d | 2013-07-11 A | 2013-07-15 A | 100% |
| 114 |  | Diagrama de Actividades | 2.5d | 2013-07-11 A | 2013-07-15 A | 100% |
| 115 |  | Diagrama de Despliegue | 2d | 2013-07-09 A | 2013-07-10 A | 100% |
| 116 |  | Diagrama de Secuencia | 1d | 2013-07-16 A | 2013-07-16 A | 100% |
| 117 | 2.2.2.3 | **Prototipos** | 2d | 2013-07-15 A | 2013-07-16 A | 100% |
| 118 |  | Mockups | 1d | 2013-07-15 A | 2013-07-15 A | 100% |
| 119 |  | Muestras de Módulos | 1d | 2013-07-16 A | 2013-07-16 A | 100% |
| 120 | 2.2.3 | **Codificación** | 4d | 2013-07-17 A | 2013-07-22 A | 100% |
| 121 |  | Framework | 2.5d | 2013-07-17 A | 2013-07-19 A | 100% |
| 122 |  | C.M.S | 2d | 2013-07-19 A | 2013-07-22 A | 100% |
| 123 | 2.2.4 | **Ejecución del plan de Pruebas** | 2d | 2013-07-22 A | 2013-07-23 A | 100% |
| 124 | 2.2.4.1 | **Documento de Resultado de Pruebas** | 2d | 2013-07-22 A | 2013-07-23 A | 100% |
| 125 |  | Plantilla Excel | 2d | 2013-07-22 A | 2013-07-23 A | 100% |
| 126 | 2.2.5 | **Transición** | 5d | 2013-07-23 A | 2013-07-29 A | 100% |
| 127 |  | Implantación | 3d | 2013-07-23 A | 2013-07-25 A | 100% |
| 128 | 2.2.5.2 | **Documentación de resultados y trabajos realizados** | 2d | 2013-07-26 A | 2013-07-29 A | 100% |
| 129 |  | Plantilla Excel | 2d | 2013-07-26 A | 2013-07-29 A | 100% |
| 130 | 3 | **Construccion** | 80d | 2013-08-19 | 2013-12-06 | 29% |
| 131 | 3.1 | **Iteración 2 (UC01 / UC02)** | 15d | 2013-08-22 A | 2013-09-11 | 93% |
| 132 |  | Reunion con el Cliente | 1d | 2013-08-27 A | 2013-08-27 A | 100% |
| 133 |  | Prototipo del modulo | 5d | 2013-08-22 A | 2013-08-28 A | 100% |
| 134 | 3.1.3 | **Corrección Errores iteración anterior** | 3d | 2013-08-26 A | 2013-08-28 A | 100% |
| 135 |  | Corrección UC03 | 3d | 2013-08-26 A | 2013-08-28 A | 100% |
| 136 | 3.1.4 | **Analisis** | 6d | 2013-08-28 A | 2013-09-04 A | 100% |
| 137 |  | Refinamiento Requerimientos | 6d | 2013-08-28 A | 2013-09-04 A | 100% |
| 138 |  | Documento de Visión | 1d | 2013-09-02 A | 2013-09-02 A | 100% |
| 139 |  | Glosario | 1d | 2013-09-03 A | 2013-09-03 A | 100% |
| 140 | 3.1.5 | **Diseño** | 8d | 2013-08-28 A | 2013-09-06 A | 100% |

| ID | WBS | Task | Duration | Start | Finish | Complete | Constraint |
| --- | --- | --- | --- | --- | --- | --- | --- |
| 141 |  | Casos de uso (Texto) | 2d | 2013-08-28 A | 2013-08-29 A | 100% |  |
| 142 |  | Diagrama de Casos de Uso | 1d | 2013-08-30 A | 2013-08-30 A | 100% |  |
| 143 |  | Diagrama de Clases | 3d | 2013-08-30 A | 2013-09-03 A | 100% |  |
| 144 |  | Diagrama de Secuencia | 1d | 2013-09-04 A | 2013-09-04 A | 100% |  |
| 145 |  | Diseño BD | 5d | 2013-09-02 A | 2013-09-06 A | 100% |  |
| 146 | 3.1.6 | **Codificación** | 8d | 2013-08-29 A | 2013-09-09 A | 100% |  |
| 147 |  | GUI del modulo | 4d | 2013-08-29 A | 2013-09-03 A | 100% |  |
| 148 |  | Funcionalidades del Modulo | 5d | 2013-09-03 A | 2013-09-09 A | 100% |  |
| 149 |  | Integracion GUI / Funcionalidades | 2d | 2013-09-06 A | 2013-09-09 A | 100% | finish no earlier than 2013-09-09 |
| 150 | 3.1.7 | **Pruebas** | 6d | 2013-09-04 A | 2013-09-11 |  |  |
| 151 |  | Ejecucion de plan pruebas | 4d | 2013-09-04 | 2013-09-09 |  |  |
| 152 |  | Documento Resultados | 3d | 2013-09-09 | 2013-09-11 |  |  |
| 153 | 3.1.8 | **Gestión** | 15d | 2013-08-22 A | 2013-09-11 A | 100% |  |
| 154 |  | Costos | 15d | 2013-08-22 A | 2013-09-11 A | 100% |  |
| 155 |  | Cronograma | 15d | 2013-08-22 A | 2013-09-11 A | 100% |  |
| 156 |  | Riesgos | 15d | 2013-08-22 A | 2013-09-11 A | 100% |  |
| 157 |  | Calidad | 15d | 2013-08-22 A | 2013-09-11 A | 100% |  |
| 158 | 3.2 | **Iteración 3 (UC05 / UC06 / UC07)** | 27d | 2013-10-03 A | 2013-11-08 | 10% |  |
| 159 |  | Reunión con el cliente | 1d | 2013-10-03 A | 2013-10-03 |  |  |
| 160 |  | Prototipo del modulo | 2d | 2013-10-03 A | 2013-10-04 A | 100% |  |
| 161 |  | Corrección Errores iteración anterior | 4d | 2013-10-03 | 2013-10-08 |  |  |
| 162 | 3.2.4 | **Analisis** | 7d | 2013-10-07 A | 2013-10-15 | 44% |  |
| 163 |  | Refinamiento de los Requerimientos | 7d | 2013-10-07 A | 2013-10-15 | 75% |  |
| 164 |  | Documento de Visión | 4d | 2013-10-07 | 2013-10-10 |  |  |
| 165 |  | Glosario | 1d | 2013-10-11 | 2013-10-11 |  |  |
| 166 | 3.2.5 | **Diseño** | 8d | 2013-10-14 | 2013-10-23 |  |  |
| 167 |  | Casos de uso (Texto) | 4d | 2013-10-14 | 2013-10-17 |  |  |
| 168 |  | Diagrama de Casos de Uso | 2d | 2013-10-16 | 2013-10-17 |  |  |
| 169 |  | Diagrama de Clases | 2d | 2013-10-18 | 2013-10-21 |  |  |
| 170 |  | Diagrama de Secuencia | 1d | 2013-10-22 | 2013-10-22 |  |  |
| 171 |  | Diseño BD | 5d | 2013-10-17 | 2013-10-23 |  |  |
| 172 | 3.2.6 | **Codificación** | 11d | 2013-10-24 A | 2013-11-07 | 56% |  |
| 173 |  | GUI del modulo | 5d | 2013-10-24 A | 2013-10-30 | 50% |  |
| 174 |  | Funcionalidades del Modulo | 7d | 2013-10-29 A | 2013-11-06 | 50% |  |
| 175 |  | Integración GUI / Funcionalidades | 4d | 2013-11-04 A | 2013-11-07 | 75% | start no earlier than 2013-11-04 |
| 176 | 3.2.7 | **Pruebas** | 6d | 2013-10-31 | 2013-11-07 |  |  |
| 177 |  | Ejecucion de pruebas | 4d | 2013-10-31 | 2013-11-05 |  |  |
| 178 |  | Documento Resultados | 3d | 2013-11-05 | 2013-11-07 |  |  |
| 179 | 3.2.8 | **Gestión** | 27d | 2013-10-03 | 2013-11-08 |  |  |
| 180 |  | Costos | 27d | 2013-10-03 | 2013-11-08 |  |  |
| 181 |  | Cronograma | 27d | 2013-10-03 | 2013-11-08 |  |  |
| 182 |  | Riesgos | 27d | 2013-10-03 | 2013-11-08 |  |  |
| 183 |  | Calidad | 27d | 2013-10-03 | 2013-11-08 |  |  |
| 184 | 3.3 | **Iteración 4 (UC08 / UC09 )** | 20d | 2013-11-11 A | 2013-12-06 |  |  |
| 185 |  | Reunion con el cliente | 3d | 2013-11-12 | 2013-11-14 |  |  |
| 186 |  | Prototipo del modulo | 2d | 2013-11-11 | 2013-11-12 |  |  |
| 187 |  | Corrección Errores iteración anterior | 5d | 2013-11-12 | 2013-11-18 |  |  |
| 188 | 3.3.4 | **Analisis** | 7d | 2013-11-19 | 2013-11-27 |  |  |
| 189 |  | Refinamiento de los Requerimientos | 4d | 2013-11-19 | 2013-11-22 |  |  |
| 190 |  | Documento de Visión | 2d | 2013-11-22 | 2013-11-25 |  |  |
| 191 |  | Glosario | 2d | 2013-11-26 | 2013-11-27 |  |  |
| 192 | 3.3.5 | **Diseño** | 5d | 2013-11-20 | 2013-11-26 |  |  |
| 193 |  | Casos de uso (Texto) | 2d | 2013-11-20 | 2013-11-21 |  |  |
| 194 |  | Diagrama de Casos de Uso | 1d | 2013-11-20 | 2013-11-20 |  |  |
| 195 |  | Diagrama de Clases | 2d | 2013-11-20 | 2013-11-21 |  |  |
| 196 |  | Diagrama de Secuencia | 2d | 2013-11-24 | 2013-11-25 |  |  |
| 197 |  | Diseño BD | 4d | 2013-11-21 | 2013-11-26 |  |  |
| 198 | 3.3.6 | **Codificación** | 8d | 2013-11-25 A | 2013-12-04 |  |  |
| 199 |  | GUI del modulo | 3d | 2013-11-25 A | 2013-11-27 |  |  |
| 200 |  | Funcionalidades del Modulo | 3d | 2013-11-25 | 2013-11-27 |  |  |
| 201 |  | Integracion GUI / Funcionalidades | 5d | 2013-11-28 | 2013-12-04 |  | start no earlier than 2013-11-28 |
| 202 | 3.3.7 | **Pruebas** | 10d | 2013-11-25 | 2013-12-06 |  |  |
| 203 |  | Ejecucion de pruebas | 10d | 2013-11-25 | 2013-12-06 |  |  |
| 204 |  | Documento Resultados | 4d | 2013-11-28 | 2013-12-03 |  |  |
| 205 | 3.3.8 | **Gestión** | 20d | 2013-11-11 | 2013-12-06 |  |  |
| 206 |  | Costos | 20d | 2013-11-11 | 2013-12-06 |  |  |
| 207 |  | Cronograma | 20d | 2013-11-11 | 2013-12-06 |  |  |
| 208 |  | Riesgos | 20d | 2013-11-11 | 2013-12-06 |  |  |
| 209 |  | Calidad | 20d | 2013-11-11 | 2013-12-06 |  |  |
| 210 | 4 | **Transición** | 15d | 2013-11-18 | 2013-12-06 |  |  |

| ID | WBS | Task | Duration | Start | Finish |
| --- | --- | --- | --- | --- | --- |
| 211 |  | Implantación | 7d | 2013-11-18 | 2013-11-26 |
| 212 | 4.2 | **Pruebas** | 8d | 2013-11-27 | 2013-12-06 |
| 213 |  | Documento resultado y trabajos realizados | 6d | 2013-11-27 | 2013-12-04 |
| 214 |  | Manual de Usuario | 5d | 2013-12-02 | 2013-12-06 |
| 215 | 4.4 | **Gestión** | 15d | 2013-11-18 | 2013-12-06 |
| 216 |  | Costos | 15d | 2013-11-18 | 2013-12-06 |
| 217 |  | Cronograma | 15d | 2013-11-18 | 2013-12-06 |
| 218 |  | Riesgos | 15d | 2013-11-18 | 2013-12-06 |
| 219 |  | Calidad | 15d | 2013-11-18 | 2013-12-06 |

## Version 2 (saved 2013-10-23, file CronogramaR_V1.1.0.mpp)

Note of the change: [OP] Actualización de los documentos, planes, estados, riesgos

Last finish stays 2013-12-06. Complete tasks 100 → 111.

Changed:

| ID | Task | Start | Finish | Complete |
| --- | --- | --- | --- | --- |
| 130 | **Construccion** |  |  | 29% → 36% |
| 158 | **Iteración 3 (UC05 / UC06 / UC07)** |  |  | 10% → 27% |
| 159 | Reunión con el cliente |  | 2013-10-03 A | 0% → 100% |
| 161 | Corrección Errores iteración anterior | 2013-10-03 A | 2013-10-08 A | 0% → 100% |
| 162 | **Analisis** |  | 2013-10-15 A | 44% → 100% |
| 163 | Refinamiento de los Requerimientos |  | 2013-10-15 A | 75% → 100% |
| 164 | Documento de Visión | 2013-10-07 A | 2013-10-10 A | 0% → 100% |
| 165 | Glosario | 2013-10-11 A | 2013-10-11 A | 0% → 100% |
| 166 | **Diseño** | 2013-10-14 A | 2013-10-23 A | 0% → 100% |
| 167 | Casos de uso (Texto) | 2013-10-14 A | 2013-10-17 A | 0% → 100% |
| 168 | Diagrama de Casos de Uso | 2013-10-16 A | 2013-10-17 A | 0% → 100% |
| 169 | Diagrama de Clases | 2013-10-18 A | 2013-10-21 A | 0% → 100% |
| 170 | Diagrama de Secuencia | 2013-10-22 A | 2013-10-22 A | 0% → 100% |
| 171 | Diseño BD | 2013-10-17 A | 2013-10-23 A | 0% → 100% |
| 172 | **Codificación** |  |  | 56% → 72% |
| 173 | GUI del modulo |  | 2013-10-30 A | 50% → 100% |

## Version 3 (saved 2013-11-28, file CronogramaR_V3.1.0.mpp)

Note of the change: Actualización de Documentos y aplicación para hito 3

Last finish stays 2013-12-06. Complete tasks 111 → 133.

Added:

| ID | Task | Duration | Start | Finish |
| --- | --- | --- | --- | --- |
| 161 | Entrega Acedemica 1 | 0d | 2013-10-08 A | 2013-10-08 A |
| 175 | Entrega Academica 2 | 0d | 2013-11-06 A | 2013-11-06 A |
| 213 | Actividad Académica | 0d | 2013-12-05 | 2013-12-05 |

Changed:

| ID | Task | Start | Finish | Complete | Other |
| --- | --- | --- | --- | --- | --- |
| 130 | **Construccion** |  |  | 36% → 86% |  |
| 131 | **Iteración 2 (UC01 / UC02)** |  | 2013-09-11 A | 93% → 100% |  |
| 150 | **Pruebas** |  | 2013-09-11 A | 0% → 100% |  |
| 151 | Ejecucion de plan pruebas | 2013-09-04 A | 2013-09-09 A | 0% → 100% |  |
| 152 | Documento Resultados | 2013-09-09 A | 2013-09-11 A | 0% → 100% |  |
| 158 | **Iteración 3 (UC05 / UC06 / UC07)** |  |  | 27% → 98% |  |
| 173 | **Codificación** |  |  | 72% → 83% |  |
| 176 | Funcionalidades del Modulo |  |  | 50% → 75% |  |
| 178 | **Pruebas** | 2013-10-31 A | 2013-11-07 A | 0% → 100% |  |
| 179 | Ejecucion de pruebas | 2013-10-31 A | 2013-11-05 A | 0% → 100% |  |
| 180 | Documento Resultados | 2013-11-05 A | 2013-11-07 A | 0% → 100% |  |
| 181 | **Gestión** | 2013-10-03 A | 2013-11-08 A | 0% → 100% |  |
| 182 | Costos | 2013-10-03 A | 2013-11-08 A | 0% → 100% |  |
| 183 | Cronograma | 2013-10-03 A | 2013-11-08 A | 0% → 100% |  |
| 184 | Riesgos | 2013-10-03 A | 2013-11-08 A | 0% → 100% |  |
| 185 | Calidad | 2013-10-03 A | 2013-11-08 A | 0% → 100% |  |
| 186 | **Iteración 4 (UC08 / UC09 )** |  |  | 0% → 61% |  |
| 187 | Reunion con el cliente | 2013-11-12 A | 2013-11-14 A | 0% → 100% |  |
| 190 | **Analisis** | 2013-11-19 A | 2013-11-27 A | 0% → 100% |  |
| 191 | Refinamiento de los Requerimientos | 2013-11-19 A | 2013-11-22 A | 0% → 100% |  |
| 192 | Documento de Visión | 2013-11-22 A | 2013-11-25 A | 0% → 100% |  |
| 193 | Glosario | 2013-11-26 A | 2013-11-27 A | 0% → 100% |  |
| 194 | **Diseño** | 2013-11-20 A | 2013-11-26 A | 0% → 100% |  |
| 195 | Casos de uso (Texto) | 2013-11-20 A | 2013-11-21 A | 0% → 100% |  |
| 196 | Diagrama de Casos de Uso | 2013-11-20 A | 2013-11-20 A | 0% → 100% |  |
| 197 | Diagrama de Clases | 2013-11-20 A | 2013-11-21 A | 0% → 100% |  |
| 198 | Diagrama de Secuencia | 2013-11-24 A | 2013-11-25 A | 0% → 100% |  |
| 199 | Diseño BD | 2013-11-21 A | 2013-11-26 A | 0% → 100% |  |
| 207 | **Gestión** | 2013-11-11 A |  | 0% → 75% |  |
| 208 | Costos | 2013-11-11 A | 2013-12-06 A | 0% → 100% |  |
| 209 | Cronograma | 2013-11-11 A | 2013-12-06 A | 0% → 100% |  |
| 210 | Riesgos | 2013-11-11 A | 2013-12-06 A | 0% → 100% |  |
| 211 | Calidad | 2013-11-11 A |  |  |  |
| 217 | Video Tutorial de uso |  |  |  | was named Manual de Usuario |
